Schedule from MS Project, 2024-07-01 to 2025-01-04, costs in $.

## Calendars

- Calendario proyecto: Mon-Fri 09:00-13:00, 15:00-19:00; Sat 08:00-12:00, 13:00-14:00; Sun off. Exceptions (off unless hours are given): 2024-07-01 (Festivo San Pedro y San Pablo), 2024-07-20 (Festivo Día de la Independencia), 2024-08-07 (Festivo Día de la Batalla de Boyacá), 2024-08-19 (Festivo La asunción de la Virgen), 2024-10-14 (Festivo Día de la Raza), 2024-11-04 (Festivo Día de Todos los Santos), 2024-11-11 (Festivo Independencia de Cartagena), 2024-12-25 (Festivo Día de Navidad).

## Resources

| Resource | Rate | Cost per use |
| --- | --- | --- |
| Hernán | 162500 |  |
| Juan | 137500 |  |
| Fabio | 112500 |  |
| Elmer | 112500 |  |
| Yeiber | 112500 |  |
| Diego | 28125 |  |
| Andrés | 28125 |  |
| Robinson | 56250 |  |
| Arturo | 42188 |  |
| Mario | 42188 |  |
| Angelo | 42188 |  |
| Jorge | 42188 |  |
| Transmisores, IRDs, Switch ASI, GPS |  | 700000000 |
| Filtros de máscara crítica |  | 30000000 |
| Combinadores |  | 30000000 |
| SSRR |  | 100000000 |
| TVRO |  | 40000000 |
| Transformador MT-BT |  | 15000000 |
| Transformador BT-BT, UPS, TDG, Aas |  | 55000000 |
| Shelter |  | 30000000 |
| Torre |  | 30000000 |
| Transporte marítimo Europa – Colombia |  | 15000000 |
| Transporte marítimo EEUU – Colombia |  | 10000000 |
| Transporte terrestre Barranquilla – Bogotá |  | 8000000 |
| Transporte terrestre Bogotá – Rio Blanco |  | 5000000 |

## Schedule

| ID | WBS | Task | Duration | Start | Finish | Predecessors | Total slack | Free slack | Resources | Work | Cost |
| --- | --- | --- | --- | --- | --- | --- | --- | --- | --- | --- | --- |
| 1 | 1 | Reunión de Arranque del Proyecto | 1d | 2024-08-09 | 2024-08-10 |  | 113.25d | 143.25d | Hernán [50%] | 4h | 650,000 |
| 2 | 2 | **Fase 1: Diseño general de la estación** | 51.25d | 2024-07-02 | 2024-09-06 |  | 0d |  |  | 971h | 121,237,500 |
| 3 | 2.1 | Elaboración y entrega del diseño general de la estación | 52.25d | 2024-07-02 | 2024-09-06 |  | 0d |  | Hernán [50%]; Juan; Fabio [50%]; Elmer | 971h | 121,237,500 |
| 4 | 3 | **Colocación de órdenes de compra (OC)** | 2d | 2024-09-06 | 2024-09-09 |  | 0d |  |  |  |  |
| 5 | 3.1 | OC transmisores, IRDs, Switch ASI, GPS | 1d | 2024-09-06 | 2024-09-07 | 3 | 92d |  |  |  |  |
| 6 | 3.2 | OC filtros de máscara crítica | 1d | 2024-09-06 | 2024-09-07 | 3 | 92d |  |  |  |  |
| 7 | 3.3 | OC combinadores | 1d | 2024-09-06 | 2024-09-07 | 3 | 92d |  |  |  |  |
| 8 | 3.4 | OC SSRR | 1d | 2024-09-06 | 2024-09-07 | 3 | 92d |  |  |  |  |
| 9 | 3.5 | OC TVRO | 1d | 2024-09-06 | 2024-09-07 | 3 | 92d |  |  |  |  |
| 10 | 3.6 | OC Transformador MT-BT | 1d | 2024-09-06 | 2024-09-07 | 3 | 92d |  |  |  |  |
| 11 | 3.7 | OC Transformador BT-BT, UPS, TDG, AAs | 1d | 2024-09-06 | 2024-09-07 | 3 | 92d |  |  |  |  |
| 12 | 3.8 | OC Obra civil, torre | 1d | 2024-09-06 | 2024-09-07 | 3 | 0d |  |  |  |  |
| 13 | 3.9 | Informe de aceptación de OCs | 1d | 2024-09-07 | 2024-09-09 | 12 | 0d |  |  |  |  |
| 14 | 4 | **Fase 2: Fabricación de equipos y realización y entrega de los protocolos de verificación, pruebas y mediciones de aceptación en fábrica (FAT)** | 52d | 2024-09-09 | 2024-11-15 |  | 0d |  |  | 16h | 2,200,000 |
| 15 | 4.1 | Fabricación de equipos | 50d | 2024-09-09 | 2024-11-13 | 13 | 0d |  |  |  |  |
| 16 | 4.2 | Protocolo FAT | 2d | 2024-11-14 | 2024-11-15 | 15 | 0d |  | Juan | 16h | 2,200,000 |
| 17 | 5 | **Obras de construcción y adecuación civil y eléctricas, incluidas las relacionadas con torres (estructura y cimentación) junto con todos sus accesorios** | 69.62d | 2024-09-09 | 2024-12-09 |  | 11d |  |  | 2520h | 212,812,640 |
| 18 | 5.1 | Obra civil shelter | 20d | 2024-09-09 | 2024-12-09 | 13 | 11.38d | 0d | Fabio [50%]; Andrés; Diego; Robinson; Shelter; Transporte marítimo EEUU – Colombia | 560h | 67,000,000 |
| 19 | 5.2 | Obra civil torre (estructura y cimentación) | 50d | 2024-09-09 | 2024-11-13 | 13 | 11d | 0d | Andrés; Diego; Robinson; Fabio [50%]; Torre; Transporte terrestre Bogotá – Rio Blanco | 1400h | 102,500,000 |
| 20 | 5.3 | Obra y adecuación eléctrica | 35d | 2024-09-09 | 2024-10-23 | 13 | 36d | 0d | Elmer; Angelo | 560h | 43,312,640 |
| 21 | 6 | **Instalación, integración y puesta en funcionamiento de equipos y elementos** | 45d | 2024-10-23 | 2024-12-20 |  | 11d |  |  | 1240h | 1,012,125,280 |
| 22 | 6.1 | Suministro e instalación de transformador MT-BT | 10d | 2024-10-23 | 2024-11-06 | 20 | 36d | 0d | Elmer; Angelo; Transformador MT-BT; Transporte terrestre Bogotá – Rio Blanco | 160h | 32,375,040 |
| 23 | 6.2 | Suministro e instalación de transformador BT-BT, UPS, TDG, AAs | 10d | 2024-11-06 | 2024-11-20 | 22 | 36d |  | Elmer; Angelo; Transformador BT-BT, UPS, TDG, Aas | 160h | 67,375,040 |
| 24 | 6.3 | Suministro e instalación de TVRO | 10d | 2024-12-09 | 2024-12-20 | 18 | 11.38d |  | Fabio [50%]; Yeiber; Diego; Andrés; Robinson; Jorge; TVRO | 440h | 65,875,040 |
| 25 | 6.4 | Suministro e instalación de transmisores, GPS, IRDs, switch ASI, rack auxiliar | 10d | 2024-11-16 | 2024-11-28 | 16 | 0d |  | Yeiber; Jorge; Transmisores, IRDs, Switch ASI, GPS; Transporte marítimo Europa – Colombia | 160h | 727,375,040 |
| 26 | 6.5 | Suministro e instalación del SSRR | 18d | 2024-11-14 | 2024-12-20 | 19 | 11d |  | Yeiber; Jorge; Arturo; Mario; SSRR | 320h | 119,125,120 |

| ID | WBS | Task | Type | Duration | Start | Finish | Predecessors | Total slack | Free slack | Resources | Work | Cost |
| --- | --- | --- | --- | --- | --- | --- | --- | --- | --- | --- | --- | --- |
| 27 | 7 | **Fase 3: Realización y entrega de los Protocolos de Verificación, Pruebas y Mediciones de Aceptación en Sitio Final (SAT)** |  | 4d | 2024-11-28 | 2024-12-04 |  | 0d |  |  | 24h | 3,300,000 |
| 28 | 7.1 | Protocolo SAT |  | 3d | 2024-11-28 | 2024-12-03 | 25 | 0d |  | Juan | 24h | 3,300,000 |
| 29 | 7.2 | Entrega de formatos de control de ingreso de activos |  | 1d | 2024-12-03 | 2024-12-04 | 28 | 25d |  |  |  |  |
| 30 | 8 | **Mediciones en campo: P.R.A., Cobertura y CEM** |  | 9d | 2024-12-20 | 2025-01-02 |  | 0d |  |  | 144h | 11,137,536 |
| 31 | 8.1 | Medición del patrón de radiación por método aéreo (P.R.A.) y realización de informe |  | 3d | 2024-12-20 | 2024-12-26 | 28 | 0d |  | Yeiber; Jorge | 48h | 3,712,512 |
| 32 | 8.2 | Medición de Cobertura y realización de informe |  | 3d | 2024-12-26 | 2024-12-30 | 31 | 4d | 0d | Yeiber; Jorge | 48h | 3,712,512 |
| 33 | 8.3 | Mediciones de campo electromagnético (CEM) y realización de informe |  | 3d | 2024-12-30 | 2025-01-02 | 31 | 0d |  | Yeiber; Jorge | 48h | 3,712,512 |
| 34 | 9 | **Capacitación DVB-T2** |  | 2d | 2025-01-02 | 2025-01-04 |  | 0d |  | Juan | 24h | 3,500,000 |
| 35 | 9.1 | Demostración teórico-práctica DVB-T2 |  | 2d | 2025-01-02 | 2025-01-04 | 33 | 0d |  | Hernán [50%] | 8h | 1,300,000 |
| 36 | 10 | Cierre del proyecto | milestone | 0d | 2024-07-01 | 2024-07-01 |  | 144.25d |  |  |  |  |
| 37 | 11 | Entrega de la documentación completa y finalización |  | 1d | 2024-12-30 | 2024-12-31 | 32 | 4d |  |  |  |  |
